# Proyecto Hiperion Cronograma

Schedule from MS Project, 2013-11-26 to 2014-07-16, status date 2013-12-23, A marks actual dates.

## Calendars

- Estándar: Mon-Fri 09:00-13:00, 15:00-19:00; Sat-Sun off.

## Resources

| Resource |
| --- |
| JIPOVI |
| AVILA |

## Schedule

| ID | WBS | Task | Duration | Start | Finish | Predecessors | Complete | Remaining | Total slack | Free slack | Resources | Work | Actual work |
| --- | --- | --- | --- | --- | --- | --- | --- | --- | --- | --- | --- | --- | --- |
| 1 | 1 | **Emisión** | 91d | 2013-12-23 A | 2014-04-28 |  | 24% | 69.29d |  |  |  | 840h | 240.8h |
| 2 | 1.1 | Análisis y Levantamiento de Requerimientos | 6d | 2013-12-23 A | 2013-12-30 A |  | 100% |  |  |  | AVILA; JIPOVI | 96h | 96h |
| 3 | 1.2 | Modelamiento Base de Datos | 5d | 2013-12-31 A | 2014-01-06 | 2 | 90% | 0.5d | 11d | 0d | JIPOVI | 40h | 36h |
| 4 | 1.3 | Diseño e Implementación | 26d | 2013-12-31 A | 2014-02-07 | 3 | 50% | 13d | 0.6d | 0d | JIPOVI | 208h | 104h |
| 5 | 1.4 | Elaboración Documento (Especificaciones Funcionales) | 3d | 2014-02-07 A | 2014-02-12 | 4 | 20% | 2.4d | 0d |  | JIPOVI | 24h | 4.8h |
| 6 | 1.5 | Especificaciones Funcionales | 11d | 2014-02-12 | 2014-02-27 | 5 |  |  | -7.4d | 0d | AVILA | 88h |  |
| 7 | 1.6 | Implementación | 20d | 2014-02-27 | 2014-03-27 | 6 |  |  | -7.4d | 0d | JIPOVI | 160h |  |
| 8 | 1.7 | Pruebas Etapa I | 6d | 2014-03-27 | 2014-04-04 | 7 |  |  | -7.4d | 0d | AVILA | 48h |  |
| 9 | 1.8 | Correcciones Incidentes | 11d | 2014-04-04 | 2014-04-21 | 8 |  |  | -7.4d | 0d | JIPOVI | 88h |  |
| 10 | 1.9 | Pruebas Etapa II | 4d | 2014-04-21 | 2014-04-25 | 9 |  |  | -7.4d | 0d | AVILA | 32h |  |
| 11 | 1.10 | Correcciones Incidentes | 7d | 2014-04-25 | 2014-05-06 | 10 |  |  | -7.4d | 0d | JIPOVI | 56h |  |
| 12 | 1.11 | Preproduccion | 2d | 2014-05-06 | 2014-05-08 | 11 |  |  | -7.4d | 0d |  |  |  |
| 13 | 2 | **Siniestros** | 108d | 2014-02-17 | 2014-07-16 |  |  |  |  |  |  |  |  |
| 14 | 2.1 | Levantamiento de Pantallas | 15d | 2014-02-17 | 2014-03-07 |  |  |  | 93d |  |  |  |  |
| 15 | 2.2 | Flujo del proceso de siniestros | 5d | 2014-02-17 | 2014-02-21 |  |  |  | 103d |  |  |  |  |
| 16 | 2.3 | Análisis y Levantamiento de Requerimientos | 10d | 2014-02-17 | 2014-02-28 | 2 |  |  | 98d |  |  |  |  |
| 17 | 2.4 | Modelamiento Base de Datos | 8d | 2014-02-17 | 2014-02-26 |  |  |  | 100d |  |  |  |  |
| 18 | 2.5 | Diseño e Implementación | 26d | 2014-02-17 | 2014-03-24 |  |  |  | 0d |  |  |  |  |
| 19 | 2.6 | Elaboración Documento (Especificaciones Funcionales) | 3d | 2014-02-17 | 2014-02-19 |  |  |  | 105d |  |  |  |  |
| 20 | 2.7 | Especificaciones Funcionales | 11d | 2014-03-25 | 2014-04-08 | 18 |  |  | 0d |  |  |  |  |
| 21 | 2.8 | Implementación | 25d | 2014-04-09 | 2014-05-13 | 20 |  |  | 0d |  |  |  |  |
| 22 | 2.9 | Pruebas Etapa I | 12d | 2014-05-14 | 2014-05-29 | 21 |  |  | 0d |  |  |  |  |
| 23 | 2.10 | Correcciones Incidentes | 15d | 2014-05-30 | 2014-06-19 | 22 |  |  | 0d |  |  |  |  |
| 24 | 2.11 | Pruebas Etapa II | 8d | 2014-06-20 | 2014-07-01 | 23 |  |  | 0d |  |  |  |  |
| 25 | 2.12 | Correcciones Incidentes | 8d | 2014-07-02 | 2014-07-11 | 24 |  |  | 0d |  |  |  |  |
| 26 | 2.13 | Preproducción | 3d | 2014-07-14 | 2014-07-16 | 25 |  |  | 0d |  |  |  |  |

| ID | WBS | Task | Type | Duration | Start | Finish | Total slack |
| --- | --- | --- | --- | --- | --- | --- | --- |
| 27 | 3 | **Cobranzas** |  | 1d | 2013-11-26 | 2013-11-26 | 0d |
| 28 | 3.1 | Análisis y Levantamiento de Requerimientos | manual | 1d | 2013-11-26 | 2013-11-26 |  |
| 29 | 3.2 | Diseño e Implementación | manual | 1d | 2013-11-26 | 2013-11-26 |  |
| 30 | 3.3 | Especificaciones Funcionales | manual | 1d | 2013-11-26 | 2013-11-26 |  |
| 31 | 3.4 | Implementación | manual | 1d | 2013-11-26 | 2013-11-26 |  |
| 32 | 3.5 | Pruebas Etapa I | manual | 1d | 2013-11-26 | 2013-11-26 |  |
| 33 | 3.6 | Correcciones Incidentes | manual | 1d | 2013-11-26 | 2013-11-26 |  |
| 34 | 3.7 | Pruebas Etapa II | manual | 1d | 2013-11-26 | 2013-11-26 |  |
| 35 | 3.8 | Correcciones Incidentes | manual | 1d | 2013-11-26 | 2013-11-26 |  |
| 36 | 3.9 | Preproducción | manual | 1d | 2013-11-26 | 2013-11-26 |  |
| 37 | 4 | **Documental** |  | 1d | 2013-11-26 | 2013-11-26 | 0d |
| 38 | 4.1 | Análisis y Levantamiento de Requerimientos | manual | 1d | 2013-11-26 | 2013-11-26 |  |
| 39 | 4.2 | Diseño e Implementación | manual | 1d | 2013-11-26 | 2013-11-26 |  |
| 40 | 4.3 | Especificaciones Funcionales | manual | 1d | 2013-11-26 | 2013-11-26 |  |
| 41 | 4.4 | Implementación | manual | 1d | 2013-11-26 | 2013-11-26 |  |
| 42 | 4.5 | Pruebas Etapa I | manual | 1d | 2013-11-26 | 2013-11-26 |  |
| 43 | 4.6 | Correcciones Incidentes | manual | 1d | 2013-11-26 | 2013-11-26 |  |
| 44 | 4.7 | Pruebas Etapa II | manual | 1d | 2013-11-26 | 2013-11-26 |  |
| 45 | 4.8 | Correcciones Incidentes | manual | 1d | 2013-11-26 | 2013-11-26 |  |
| 46 | 4.9 | Preproducción | manual | 1d | 2013-11-26 | 2013-11-26 |  |
| 47 | 5 | **Gerencia** |  | 1d | 2013-11-26 | 2013-11-26 | 0d |
| 48 | 5.1 | Análisis y Levantamiento de Requerimientos | manual | 1d | 2013-11-26 | 2013-11-26 |  |
| 49 | 5.2 | Diseño e Implementación | manual | 1d | 2013-11-26 | 2013-11-26 |  |
| 50 | 5.3 | Especificaciones Funcionales | manual | 1d | 2013-11-26 | 2013-11-26 |  |
| 51 | 5.4 | Implementación | manual | 1d | 2013-11-26 | 2013-11-26 |  |
| 52 | 5.5 | Pruebas Etapa I | manual | 1d | 2013-11-26 | 2013-11-26 |  |
| 53 | 5.6 | Correcciones Incidentes | manual | 1d | 2013-11-26 | 2013-11-26 |  |
| 54 | 5.7 | Pruebas Etapa II | manual | 1d | 2013-11-26 | 2013-11-26 |  |
| 55 | 5.8 | Correcciones Incidentes | manual | 1d | 2013-11-26 | 2013-11-26 |  |
| 56 | 5.9 | Preproducción | manual | 1d | 2013-11-26 | 2013-11-26 |  |

| ID | WBS | Task | Type | Duration | Start | Finish | Total slack |
| --- | --- | --- | --- | --- | --- | --- | --- |
| 57 | 6 | **Administración** |  | 1d | 2013-11-26 | 2013-11-26 | 0d |
| 58 | 6.1 | Análisis y Levantamiento de Requerimientos | manual | 1d | 2013-11-26 | 2013-11-26 |  |
| 59 | 6.2 | Diseño e Implementación | manual | 1d | 2013-11-26 | 2013-11-26 |  |
| 60 | 6.3 | Especificaciones Funcionales | manual | 1d | 2013-11-26 | 2013-11-26 |  |
| 61 | 6.4 | Implementación | manual | 1d | 2013-11-26 | 2013-11-26 |  |
| 62 | 6.5 | Pruebas Etapa I | manual | 1d | 2013-11-26 | 2013-11-26 |  |
| 63 | 6.6 | Correcciones Incidentes | manual | 1d | 2013-11-26 | 2013-11-26 |  |
| 64 | 6.7 | Pruebas Etapa II | manual | 1d | 2013-11-26 | 2013-11-26 |  |
| 65 | 6.8 | Correcciones Incidentes | manual | 1d | 2013-11-26 | 2013-11-26 |  |
| 66 | 6.9 | Preproducción | manual | 1d | 2013-11-26 | 2013-11-26 |  |
